# 运维管理2 工作计划（2018.03.07 新版数据库 V1.0）

Schedule from MS Project, 2019-04-08 to 2019-05-22.

## Calendars

- 标准: Mon-Fri 08:00-12:00, 13:00-17:00; Sat-Sun off. Exceptions (off unless hours are given): 2019-05-01 to 2019-05-03 (2019劳动节).

## Resources

| Resource |
| --- |
| 郭勇 |
| 胡艳娇 |
| wu |
| wu |
| 韩民畴 |
| 郦卫 |
| 中试 |
| all |
| 张炳旺--设计部 |
| 2 |
| 3 |
| 设计部 |
| 软件开发 |
| 设计部&&软阿金开发 |
| 软件 |
| 刘国军 |
| 吴国伟 |
| 中试部 |
| 黄均刚 |
| 章飞翔 |
| 郭勇\刘国军 |

## Schedule

| ID | WBS | Task | Duration | Start | Finish | Predecessors | Total slack | Free slack | Constraint | Resources | Work |
| --- | --- | --- | --- | --- | --- | --- | --- | --- | --- | --- | --- |
| 1 | 1 | **运维管理主站&&终端 第2阶段** | 30d? | 2019-04-08 | 2019-05-22 |  | 0d |  | start no earlier than 2019-04-08 |  | 3120h |
| 2 | 1.1 | **巡检、检验、验收测试及修复** | 8d? | 2019-04-08 | 2019-04-17 |  | 4d |  |  |  | 136h |
| 3 | 1.1.1 | 设计部测试并集中反馈测试结果 | 3d | 2019-04-08 | 2019-04-10 |  | 6d | 0d |  | 设计部 | 24h |
| 4 | 1.1.2 | 完善、修复不符合测试大纲要求 | 2d | 2019-04-11 | 2019-04-12 | 3 | 6d | 0d |  | 软件开发 [300%] | 48h |
| 5 | 1.1.3 | 设计部确认效果并意见达成一致 | 3d? | 2019-04-15 | 2019-04-17 | 4 | 6d | 0d |  | 设计部 [50%]; 软件 [200%] | 24h |
| 6 | 1.1.4 | 第一轮中试部测试 | 5d | 2019-04-08 | 2019-04-12 |  | 25d |  |  | 中试部 | 40h |
| 7 | 1.1.5 | bug修复 | 2d | 2019-04-08 | 2019-04-09 |  | 28d |  |  |  |  |
| 8 | 1.2 | **设备台账、图档管理、缺陷管理、典型案例模块测试及修复** | 6d? | 2019-04-08 | 2019-04-15 |  | 24d |  |  |  | 120h |
| 9 | 1.2.1 | 设计部测试并集中反馈测试结果 | 1d | 2019-04-08 | 2019-04-08 |  | 24d | 0d |  | 设计部 | 8h |
| 10 | 1.2.2 | 完善、修复不符合测试大纲要求 | 2d | 2019-04-09 | 2019-04-10 | 9 | 24d | 0d |  | 软件开发 [300%] | 48h |
| 11 | 1.2.3 | 设计部确认效果并意见达成一致 | 3d? | 2019-04-11 | 2019-04-15 | 10 | 24d |  |  | 设计部 [50%]; 软件 [200%] | 24h |
| 12 | 1.2.4 | 中试部测试 | 5d | 2019-04-08 | 2019-04-12 |  | 25d |  |  | 中试部 | 40h |
| 13 | 1.2.5 | bug修复 | 4d | 2019-04-08 | 2019-04-11 |  | 26d |  |  |  |  |
| 14 | 1.3 | **统计分析模块** | 21d? | 2019-04-18 | 2019-05-21 | 5 | 1d |  |  | 刘国军; 郭勇; 郦卫 | 1112h |
| 15 | 1.3.1 | 设计部测试并集中反馈测试结果 | 1d | 2019-04-18 | 2019-04-18 |  | 16d | 0d |  | 设计部 | 8h |
| 16 | 1.3.2 | 完善、修复不符合测试大纲要求 | 2d | 2019-04-19 | 2019-04-22 | 15 | 16d | 0d |  | 软件开发 [300%] | 48h |
| 17 | 1.3.3 | 设计部确认效果并意见达成一致 | 3d? | 2019-04-23 | 2019-04-25 | 16 | 16d |  |  | 设计部 [50%]; 软件 [200%] | 24h |
| 18 | 1.3.4 | 中试部测试 | 5d | 2019-04-18 | 2019-04-24 |  | 17d |  |  | 中试部 | 40h |
| 19 | 1.3.5 | bug修复 | 4d | 2019-04-18 | 2019-04-23 |  | 18d |  |  |  |  |
| 20 | 1.3.6 | **厂站管理-后台** | 3d | 2019-04-18 | 2019-04-22 |  | 4d | 0d |  | 郭勇 | 24h |
| 21 | 1.3.6.1 | 增长趋势 | 3d | 2019-04-18 | 2019-04-22 |  | 4d |  |  |  |  |
| 22 | 1.3.7 | **变电站(地图点击进去)-后台** | 5d? | 2019-04-23 | 2019-04-29 | 20 | 1d | 0d |  | 刘国军; 郭勇 | 144h |
| 23 | 1.3.7.1 | 厂站概况 | 1d? | 2019-04-23 | 2019-04-23 |  | 5d |  |  | 郭勇 | 8h |
| 24 | 1.3.7.2 | 设备概况 | 2d | 2019-04-23 | 2019-04-24 |  | 4d |  |  | 郭勇 | 16h |

Notes:
- 1: 该计划从提交设计部测试开始。04月08日开始设计部测试

| ID | WBS | Task | Duration | Start | Finish | Predecessors | Total slack | Free slack | Constraint | Resources | Work |
| --- | --- | --- | --- | --- | --- | --- | --- | --- | --- | --- | --- |
| 25 | 1.3.7.3 | **工作作业** | 5d? | 2019-04-23 | 2019-04-29 |  | 1d |  |  | 刘国军 | 40h |
| 26 | 1.3.7.3.1 | 运维检修 | 1d | 2019-04-23 | 2019-04-23 |  | 7d |  | finish no earlier than 2019-04-23 |  |  |
| 27 | 1.3.7.3.2 | 缺陷作业 | 1d | 2019-04-24 | 2019-04-24 |  | 4d |  | start no earlier than 2019-04-24 |  |  |
| 28 | 1.3.7.3.3 | 缺陷统计 | 1d? | 2019-04-25 | 2019-04-25 |  | 3d |  | start no earlier than 2019-04-25 |  |  |
| 29 | 1.3.7.3.4 | 专项作业 | 2d | 2019-04-26 | 2019-04-29 |  | 1d |  | start no earlier than 2019-04-26 |  |  |
| 30 | 1.3.8 | **任务管控-后台** | 6d? | 2019-04-30 | 2019-05-10 | 22 | 1d | 0d |  | 刘国军 | 48h |
| 31 | 1.3.8.1 | 运维检修 | 1d? | 2019-04-30 | 2019-04-30 |  | 3d | 0d |  |  |  |
| 32 | 1.3.8.2 | 缺陷作业 | 1d? | 2019-05-06 | 2019-05-06 | 31 | 3d | 0d |  |  |  |
| 33 | 1.3.8.3 | 缺陷统计 | 2d | 2019-05-07 | 2019-05-08 | 32 | 1d | 0d |  |  |  |
| 34 | 1.3.8.4 | 专项作业 | 2d | 2019-05-09 | 2019-05-10 | 33 | 1d |  |  |  |  |
| 35 | 1.3.9 | **设备管理-后台** | 7d? | 2019-05-13 | 2019-05-21 | 30 | 1d |  |  | 郭勇; 刘国军 | 272h |
| 36 | 1.3.9.1 | **设备总览** | 6d? | 2019-05-13 | 2019-05-20 |  | 2d |  |  | 郭勇 | 48h |
| 37 | 1.3.9.1.1 | 设备规模 | 1d | 2019-05-13 | 2019-05-13 |  | 2d | 0d |  |  |  |
| 38 | 1.3.9.1.2 | 年限分析 | 1d? | 2019-05-14 | 2019-05-14 | 37 | 2d | 0d |  |  |  |
| 39 | 1.3.9.1.3 | 增长趋势 | 2d | 2019-05-15 | 2019-05-16 | 38 | 2d | 0d |  |  |  |
| 40 | 1.3.9.1.4 | 区域分析 | 2d | 2019-05-17 | 2019-05-20 | 39 | 2d |  |  |  |  |
| 41 | 1.3.9.2 | **缺陷总览** | 7d? | 2019-05-13 | 2019-05-21 |  | 1d |  |  | 刘国军 | 56h |
| 42 | 1.3.9.2.1 | 缺陷统计 | 1d? | 2019-05-13 | 2019-05-13 |  | 1d | 0d |  |  |  |
| 43 | 1.3.9.2.2 | 增长趋势 | 2d | 2019-05-14 | 2019-05-15 | 42 | 1d | 0d |  |  |  |
| 44 | 1.3.9.2.3 | 专业分析 | 2d | 2019-05-16 | 2019-05-17 | 43 | 1d | 0d |  |  |  |
| 45 | 1.3.9.2.4 | 设备类型分析 | 2d | 2019-05-20 | 2019-05-21 | 44 | 1d |  |  |  |  |
| 46 | 1.3.9.3 | **设备周期管理** | 7d? | 2019-05-13 | 2019-05-21 |  | 1d |  |  | 郭勇 | 56h |
| 47 | 1.3.9.3.1 | 各地市周期分析 | 1d? | 2019-05-13 | 2019-05-13 |  | 1d | 0d |  |  |  |
| 48 | 1.3.9.3.2 | 已超周期分析 | 2d | 2019-05-14 | 2019-05-15 | 47 | 1d | 0d |  |  |  |
| 49 | 1.3.9.3.3 | 3个月内即将找周期分析 | 2d | 2019-05-16 | 2019-05-17 | 48 | 1d | 0d |  |  |  |
| 50 | 1.3.9.3.4 | 已超周期未安排计划分析 | 2d | 2019-05-20 | 2019-05-21 | 49 | 1d |  |  |  |  |

| ID | WBS | Task | Duration | Start | Finish | Predecessors | Total slack | Free slack | Resources | Work |
| --- | --- | --- | --- | --- | --- | --- | --- | --- | --- | --- |
| 51 | 1.4 | **主动推送** | 6d? | 2019-04-08 | 2019-04-15 |  | 24d |  | 郦卫; 吴国伟 | 216h |
| 52 | 1.4.1 | 设计部测试并集中反馈测试结果 | 1d | 2019-04-08 | 2019-04-08 |  | 24d | 0d | 设计部 | 8h |
| 53 | 1.4.2 | 完善、修复不符合测试大纲要求 | 2d | 2019-04-09 | 2019-04-10 | 52 | 24d | 0d | 软件开发 [300%] | 48h |
| 54 | 1.4.3 | 设计部确认效果并意见达成一致 | 3d? | 2019-04-11 | 2019-04-15 | 53 | 24d |  | 设计部 [50%]; 软件 [200%] | 24h |
| 55 | 1.4.4 | 中试部测试 | 5d | 2019-04-08 | 2019-04-12 |  | 25d |  | 中试部 | 40h |
| 56 | 1.4.5 | bug修复 | 4d | 2019-04-08 | 2019-04-11 |  | 26d |  |  |  |
| 57 | 1.5 | **后台管理--模板** | 6d? | 2019-04-08 | 2019-04-15 |  | 24d |  | 刘国军; 黄均刚 | 216h |
| 58 | 1.5.1 | 设计部测试并集中反馈测试结果 | 1d | 2019-04-08 | 2019-04-08 |  | 24d | 0d | 设计部 | 8h |
| 59 | 1.5.2 | 完善、修复不符合测试大纲要求 | 2d | 2019-04-09 | 2019-04-10 | 58 | 24d | 0d | 软件开发 [300%] | 48h |
| 60 | 1.5.3 | 设计部确认效果并意见达成一致 | 3d? | 2019-04-11 | 2019-04-15 | 59 | 24d |  | 设计部 [50%]; 软件 [200%] | 24h |
| 61 | 1.5.4 | 中试部测试 | 5d | 2019-04-08 | 2019-04-12 |  | 25d |  | 中试部 | 40h |
| 62 | 1.5.5 | bug修复 | 4d | 2019-04-08 | 2019-04-11 |  | 26d |  |  |  |
| 63 | 1.5.6 | **系统管理** | 6d | 2019-04-08 | 2019-04-15 |  | 24d |  |  |  |
| 64 | 1.5.6.1 | 角色权限管理 | 3d | 2019-04-08 | 2019-04-10 |  | 25d | 0d |  |  |
| 65 | 1.5.6.2 | 人员管理 | 3d | 2019-04-11 | 2019-04-15 | 64 | 24d |  |  |  |
| 66 | 1.6 | **设备信息** | 1d? | 2019-04-08 | 2019-04-08 |  | 29d |  |  |  |
| 67 | 1.6.1 | 讨论设计 | 1d? | 2019-04-08 | 2019-04-08 |  | 29d |  |  |  |
| 68 | 1.7 | **图像识别** | 30d? | 2019-04-08 | 2019-05-22 |  | 0d |  | 章飞翔; 郦卫; 郭勇; 刘国军 | 1320h |
| 69 | 1.7.1 | 5800集成图像识别 | 15d? | 2019-04-08 | 2019-04-26 |  | 15d |  | 3 | 120h |
| 70 | 1.7.2 | 图像识别--导入模板库 | 30d | 2019-04-08 | 2019-05-22 |  | 0d |  | 2 | 240h |
| 71 | 1.7.3 | 图像识别项目 | 5d | 2019-04-08 | 2019-04-12 |  | 25d |  |  |  |

Notes:
- 69: 3人
